# PlanTrendingGolden

Schedule from MS Project, 2019-10-28 to 2019-12-09.
Sky123.Org

## Calendars

- Standard: Mon-Fri 08:00-12:00, 13:00-17:00; Sat-Sun off.

## Resources

| Resource |
| --- |
| Thắng |
| Sâm |
| Quang |
| Dung |
| Phượng |
| Yến |
| Tuấn |
| Kiên |

## Schedule

| ID | WBS | Task | Type | Duration | Start | Finish | Predecessors | Total slack | Resources | Work |
| --- | --- | --- | --- | --- | --- | --- | --- | --- | --- | --- |
| 1 | 1 | **Thi công trang web** |  | 31d | 2019-10-28 | 2019-12-09 |  | 0d |  | 856h |
| 2 | 1.1 | Thiết kế trang chủ | manual | 2d | 2019-10-28 | 2019-10-29 |  |  | Thắng | 16h |
| 3 | 1.2 | Thi công trang chủ | manual | 5d | 2019-10-30 | 2019-11-05 | 2 |  | Thắng; Tuấn | 80h |
| 4 | 1.3 | Kiểm tra, đánh giá trang chủ | manual | 1d | 2019-11-06 | 2019-11-06 | 3 |  | Quang | 8h |
| 5 | 1.4 | Thiết kế trang liên hệ | manual | 2d | 2019-10-28 | 2019-10-29 |  |  | Dung | 16h |
| 6 | 1.5 | Thi công trang liên hệ | manual | 4d | 2019-10-30 | 2019-11-04 | 5 |  | Dung | 32h |
| 7 | 1.6 | Kiểm tra, đánh giá tranng liên hệ | manual | 1d | 2019-11-05 | 2019-11-05 | 6 |  | Quang | 8h |
| 8 | 1.7 | Thiết kế trang dự án | manual | 2d | 2019-10-28 | 2019-10-29 |  |  | Yến | 16h |
| 9 | 1.8 | Thi công trang dự án | manual | 4d | 2019-10-30 | 2019-11-04 | 8 |  | Yến | 32h |
| 10 | 1.9 | Kiểm tra, đánh giá trang dự án | manual | 2d | 2019-11-05 | 2019-11-06 | 9 |  | Sâm | 16h |
| 11 | 1.10 | Thiết kế trang tin tức | manual | 2d | 2019-10-28 | 2019-10-29 |  |  | Kiên | 16h |
| 12 | 1.11 | Thi công trang tin tức | manual | 3d | 2019-11-01 | 2019-11-05 | 11FS+2d |  | Tuấn | 24h |
| 13 | 1.12 | Kiểm tra, đánh giá trang tin tức | manual | 2d | 2019-11-07 | 2019-11-08 | 12FS+1d |  | Tuấn | 16h |
| 14 | 1.13 | Thiết kế thanh tìm kiếm | manual | 1d | 2019-10-28 | 2019-10-28 |  |  | Phượng | 8h |
| 15 | 1.14 | Thi công thanh tìm kiếm | manual | 1d | 2019-11-01 | 2019-11-01 | 14FS+3d |  | Phượng | 8h |
| 16 | 1.15 | Kiểm tra thanh tìm kiếm | manual | 1d | 2019-11-06 | 2019-11-06 | 15FS+2d |  | Phượng | 8h |
| 17 | 1.16 | Tạo trang nội thất nhà phố | manual | 1d | 2019-11-07 | 2019-11-07 | 4, 7, 10 |  | Sâm | 8h |
| 18 | 1.17 | Tạo trang nội thất chung cư - homestay | manual | 1d | 2019-11-07 | 2019-11-07 | 4, 7, 10 |  | Sâm | 8h |
| 19 | 1.18 | Tạo trang nội thất nhà hàng - cà phê | manual | 1d | 2019-11-07 | 2019-11-07 | 4, 7, 10 |  | Sâm | 8h |
| 20 | 1.19 | Thiết kế trang nội thất nhà phố | manual | 2d | 2019-11-07 | 2019-11-08 | 17SS |  | Dung | 16h |
| 21 | 1.20 | Thi công trang nội thất nhà phố | manual | 4d | 2019-11-11 | 2019-11-14 | 20 |  | Thắng | 32h |
| 22 | 1.21 | Kiểm tra, đánh giá trang nội thất nhà phố | manual | 2d | 2019-11-15 | 2019-11-18 | 21 |  | Kiên | 16h |
| 23 | 1.22 | Thiết kế trang nội thất chung cư - homestay | manual | 2d | 2019-11-07 | 2019-11-08 | 18SS |  | Yến | 16h |
| 24 | 1.23 | Thi công trang nội thất chung cư - homestay | manual | 4d | 2019-11-11 | 2019-11-14 | 23 |  | Quang | 32h |
| 25 | 1.24 | Kiểm tra, đánh giá trang nội thất chung cư - homestay | manual | 2d | 2019-11-15 | 2019-11-18 | 24 |  | Tuấn | 16h |
| 26 | 1.25 | Thiết kế trang nội thất nhà hàng - cà phê | manual | 2d | 2019-11-07 | 2019-11-08 | 19SS |  | Kiên | 16h |
| 27 | 1.26 | Thi công trang nội thất nhà hàng - cà phê | manual | 4d | 2019-11-11 | 2019-11-14 | 26 |  | Phượng | 32h |
| 28 | 1.27 | Kiểm tra, đánh giá trang nội thất nhà hàng - cà phê | manual | 2d | 2019-11-15 | 2019-11-18 | 27 |  | Tuấn | 16h |
| 29 | 1.28 | Tạo trang thi công nhà phố | manual | 1d | 2019-11-19 | 2019-11-19 | 22, 25, 28 |  | Quang | 8h |
| 30 | 1.29 | Tạo trang thi công chung cư - homestay | manual | 1d | 2019-11-19 | 2019-11-19 | 22, 25, 28 |  | Quang | 8h |
| 31 | 1.30 | Tạo trang thi công nhà hàng - cà phê | manual | 1d | 2019-11-19 | 2019-11-19 | 22, 25, 28 |  | Quang | 8h |
| 32 | 1.31 | Thiết kế trang thi công nhà phố | manual | 2d | 2019-11-19 | 2019-11-20 | 29SS |  | Kiên | 16h |
| 33 | 1.32 | Thi công trang trang thi công nhà phố | manual | 4d | 2019-11-21 | 2019-11-26 | 32 |  | Sâm | 32h |
| 34 | 1.33 | Kiểm tra, đánh giá trang thi công nhà phố | manual | 2d | 2019-11-27 | 2019-11-28 | 33 |  | Yến | 16h |
| 35 | 1.34 | Thiết kế trang thi công chung cư - homestay | manual | 2d | 2019-11-19 | 2019-11-20 | 30SS |  | Tuấn | 16h |
| 36 | 1.35 | Thi công trang trang thi công chung cư - homestay | manual | 4d | 2019-11-21 | 2019-11-26 | 35 |  | Phượng | 32h |
| 37 | 1.36 | Kiểm tra, đánh giá trang thi công chung cư - homestay | manual | 2d | 2019-11-27 | 2019-11-28 | 36 |  | Dung | 16h |
| 38 | 1.37 | Thiết kế trang thi công nhà hàng - cà phê | manual | 2d | 2019-11-19 | 2019-11-20 | 31SS |  | Yến | 16h |
| 39 | 1.38 | Thi công trang thi công nhà hàng - cà phê | manual | 4d | 2019-11-21 | 2019-11-26 | 38 |  | Thắng | 32h |
| 40 | 1.39 | Kiểm tra, đánh giá trang thi công nhà hàng - cà phê | manual | 2d | 2019-11-27 | 2019-11-28 | 39 |  | Quang | 16h |
| 41 | 1.40 | Tạo trang thư viện hình ảnh | manual | 1d | 2019-11-29 | 2019-11-29 | 34, 37, 40 |  | Dung | 8h |
| 42 | 1.41 | Tạo trang thư viện video | manual | 1d | 2019-11-29 | 2019-11-29 | 34, 37, 40 |  | Dung | 8h |
| 43 | 1.42 | Thiết kế trang thư viện hình ảnh | manual | 2d | 2019-11-29 | 2019-12-02 | 41SS |  | Sâm | 16h |
| 44 | 1.43 | Thi công trang thư viện hình ảnh | manual | 3d | 2019-12-03 | 2019-12-05 | 43 |  | Thắng | 24h |
| 45 | 1.44 | Kiểm tra, đánh giá trang thư viện hình ảnh | manual | 2d | 2019-12-06 | 2019-12-09 | 44 |  | Quang | 16h |
| 46 | 1.45 | Thiết kế trang thư viện video | manual | 2d | 2019-11-29 | 2019-12-02 | 42SS |  | Yến | 16h |
| 47 | 1.46 | Thi công trang thư viện video | manual | 3d | 2019-12-03 | 2019-12-05 | 46 |  | Phượng | 24h |
| 48 | 1.47 | Kiểm tra,đánh giá trang thư viện video | manual | 1d | 2019-12-06 | 2019-12-06 | 47 |  | Tuấn | 8h |
